# 3.7小蚂蚁-活动收录网站间接估算成本

Schedule from MS Project, 2019-03-18 to 2019-05-13, costs in ¥.

## Calendars

- “标准”的副本: Mon-Fri 08:00-12:00, 13:00-17:00; Sat-Sun off.

## Resources

| Resource | Rate |
| --- | --- |
| 项目经理 | 50 |
| 产品经理 | 50 |
| UI/UE设计师 | 40 |
| 软件架构师 | 55 |
| 需求专家 | 40 |
| 质量专家 | 35 |
| 程序员1 | 25 |
| 程序员2 | 25 |
| 程序员3 | 25 |
| 测试员1 | 20 |
| 测试员2 | 20 |
| 团队建设费 |  |
| 测试货物 | 10 |
| 间接成本 |  |
| 储备 |  |

## Schedule

| ID | WBS | Task | Duration | Start | Finish | Predecessors | Total slack | Free slack | Resources | Work | Cost | 总成本 |
| --- | --- | --- | --- | --- | --- | --- | --- | --- | --- | --- | --- | --- |
| 1 | 1 | **启动** | 10d | 2019-03-18 | 2019-03-29 |  |  |  |  | 96h | 4,280 | ¥4,280.00 |
| 2 | 1.1 | 任命项目经理 | 1d? | 2019-03-18 | 2019-03-18 |  | 5d | 4d |  |  |  | ¥0.00 |
| 3 | 1.2 | 组建核心团队 | 3d | 2019-03-18 | 2019-03-20 |  | 3d | 2d | UI/UE设计师; 产品经理; 程序员1; 软件架构师; 项目经理; 需求专家; 质量专家 | 56h | 2,360 | ¥2,360.00 |
| 4 | 1.3 | 干系人分析 | 2d | 2019-03-18 | 2019-03-22 |  | 1d | 0d | 项目经理; 需求专家 | 16h | 720 | ¥720.00 |
| 5 | 1.4 | 制定章程 | 1d | 2019-03-27 | 2019-03-27 | 4, 2, 3 | 1d | 0d | 产品经理 | 8h | 400 | ¥400.00 |
| 6 | 1.5 | 确定项目发起人 | 1d | 2019-03-27 | 2019-03-27 | 5FF | 1d | 0d | 项目经理 | 8h | 400 | ¥400.00 |
| 7 | 1.6 | 项目启动大会 | 1d | 2019-03-28 | 2019-03-28 | 6 | 1d | 0d | 项目经理 | 8h | 400 | ¥400.00 |
| 8 | 2 | **规划** | 32d | 2019-03-29 | 2019-05-13 |  |  |  |  | 616h | 21,040 | ¥21,040.00 |
| 9 | 2.1 | **规划范围** | 5d | 2019-03-29 | 2019-04-04 |  | 2d |  |  | 48h | 1,920 | ¥1,920.00 |
| 10 | 2.1.1 | 制定需求说明书 | 1d | 2019-03-29 | 2019-03-29 | 7 | 2d | 0d | 需求专家 | 8h | 320 | ¥320.00 |
| 11 | 2.1.2 | 界面设计 | 1d | 2019-04-01 | 2019-04-01 | 10 | 3d | 1d | UI/UE设计师 | 8h | 320 | ¥320.00 |
| 12 | 2.1.3 | 详细设计说明书 | 1d | 2019-04-02 | 2019-04-02 | 10 | 2d | 0d | 需求专家 | 8h | 320 | ¥320.00 |
| 13 | 2.1.4 | 范围说明书 | 1d | 2019-04-01 | 2019-04-01 | 10 | 3d | 1d | 需求专家 | 8h | 320 | ¥320.00 |
| 14 | 2.1.5 | 创建WBS | 1d | 2019-04-03 | 2019-04-03 | 13, 11, 12 | 2d | 0d | 需求专家 | 8h | 320 | ¥320.00 |
| 15 | 2.1.6 | 形成范围基准 | 1d | 2019-04-04 | 2019-04-04 | 14 | 2d | 0d | 需求专家 | 8h | 320 | ¥320.00 |
| 16 | 2.2 | **规划时间** | 4d | 2019-04-05 | 2019-04-10 |  | 2d |  |  | 32h | 1,600 | ¥1,600.00 |
| 17 | 2.2.1 | 排列工作包顺序 | 1d | 2019-04-05 | 2019-04-05 | 15 | 2d | 0d | 产品经理 | 8h | 400 | ¥400.00 |
| 18 | 2.2.2 | 估算资源 | 1d | 2019-04-08 | 2019-04-08 | 17 | 2d | 0d | 产品经理 | 8h | 400 | ¥400.00 |
| 19 | 2.2.3 | 估算持续时间 | 1d | 2019-04-09 | 2019-04-09 | 18 | 2d | 0d | 产品经理 | 8h | 400 | ¥400.00 |
| 20 | 2.2.4 | 制定进度计划 | 1d | 2019-04-10 | 2019-04-10 | 19 | 4d | 0d | 产品经理 | 8h | 400 | ¥400.00 |
| 21 | 2.3 | **规划成本** | 3d | 2019-04-10 | 2019-04-12 |  | 2d | 0d |  | 16h | 800 | ¥800.00 |
| 22 | 2.3.1 | 项目成本估计 | 1d | 2019-04-10 | 2019-04-10 | 19 | 2d | 0d | 项目经理 | 8h | 400 | ¥400.00 |
| 23 | 2.3.2 | 项目预算 | 1d | 2019-04-12 | 2019-04-12 | 22 | 2d |  | 项目经理 | 8h | 400 | ¥400.00 |
| 24 | 2.4 | **规划质量** | 2d | 2019-04-05 | 2019-04-08 |  | 6d | 4d |  | 16h | 560 | ¥560.00 |
| 25 | 2.4.1 | 制定测试计划 | 1d | 2019-04-05 | 2019-04-05 | 15 | 6d | 0d | 质量专家 | 8h | 280 | ¥280.00 |
| 26 | 2.4.2 | 制定测试用例 | 1d | 2019-04-08 | 2019-04-08 | 25 | 6d |  | 质量专家 | 8h | 280 | ¥280.00 |

| ID | WBS | Task | Duration | Start | Finish | Predecessors | Total slack | Free slack | Resources | Work | Cost | 总成本 |
| --- | --- | --- | --- | --- | --- | --- | --- | --- | --- | --- | --- | --- |
| 27 | 2.5 | **规划人力资源** | 2d | 2019-04-08 | 2019-04-09 |  | 5d | 3d |  | 16h | 800 | ¥800.00 |
| 28 | 2.5.1 | 制定人力资源计划 | 1d | 2019-04-09 | 2019-04-09 | 18 | 5d |  | 项目经理 | 8h | 400 | ¥400.00 |
| 29 | 2.5.2 | 制定人员配备管理计划 | 1d | 2019-04-08 | 2019-04-08 | 25 | 6d |  | 项目经理 | 8h | 400 | ¥400.00 |
| 30 | 2.6 | **规划沟通** | 1d | 2019-04-11 | 2019-04-11 |  | 22d |  |  | 8h | 400 | ¥400.00 |
| 31 | 2.6.1 | 制定沟通管理计划 | 1d | 2019-04-11 | 2019-04-11 | 20 | 22d |  | 项目经理 | 8h | 400 | ¥400.00 |
| 32 | 2.7 | **规划采集信息** | 1d | 2019-04-11 | 2019-04-11 |  | 22d |  |  | 24h | 600 | ¥600.00 |
| 33 | 2.7.1 | 搜集活动信息 | 1d | 2019-04-11 | 2019-04-11 | 20 | 22d |  | 程序员1 | 8h | 200 | ¥200.00 |
| 34 | 2.7.2 | 搜集班级人员表 | 1d | 2019-04-11 | 2019-04-11 | 20 | 22d |  | 程序员2 | 8h | 200 | ¥200.00 |
| 35 | 2.7.3 | 搜集院校专业表 | 1d | 2019-04-11 | 2019-04-11 | 20 | 22d |  | 程序员3 | 8h | 200 | ¥200.00 |
| 36 | 2.8 | **规划风险** | 4d | 2019-04-15 | 2019-04-18 |  | 2d |  |  | 32h | 1,600 | ¥1,600.00 |
| 37 | 2.8.1 | 识别风险 | 1d | 2019-04-15 | 2019-04-15 | 16, 21, 24, 27 | 2d | 0d | 项目经理 | 8h | 400 | ¥400.00 |
| 38 | 2.8.2 | 风险分析 | 1d | 2019-04-16 | 2019-04-16 | 37 | 2d | 0d | 项目经理 | 8h | 400 | ¥400.00 |
| 39 | 2.8.3 | 制定风险登记册 | 1d | 2019-04-17 | 2019-04-17 | 38 | 2d | 0d | 项目经理 | 8h | 400 | ¥400.00 |
| 40 | 2.8.4 | 规划整合 | 1d | 2019-04-18 | 2019-04-18 | 39 | 2d | 0d | 项目经理 | 8h | 400 | ¥400.00 |
| 41 | 2.9 | **执行与监控** | 2d | 2019-04-19 | 2019-04-22 |  | 2d |  |  | 16h | 800 | ¥800.00 |
| 42 | 2.9.1 | 组建项目团队 | 1d | 2019-04-19 | 2019-04-19 | 40 | 2d | 0d | 项目经理 | 8h | 400 | ¥400.00 |
| 43 | 2.9.2 | 项目执行 | 1d | 2019-04-22 | 2019-04-22 | 42 | 2d | 0d | 项目经理 | 8h | 400 | ¥400.00 |
| 44 | 2.10 | **个人模块** | 5d | 2019-04-25 | 2019-05-01 |  | 8d |  |  | 88h | 2,160 | ¥2,160.00 |
| 45 | 2.10.1 | 登录系统 | 1d | 2019-04-25 | 2019-04-25 | 43 | 8d | 0d | 程序员3 | 8h | 200 | ¥200.00 |
| 46 | 2.10.2 | 注册账号 | 1d | 2019-04-29 | 2019-04-29 | 43 | 10d |  | 程序员3 | 8h | 200 | ¥200.00 |
| 47 | 2.10.3 | 退出系统 | 1d | 2019-04-30 | 2019-04-30 | 45 | 9d |  | 程序员3 | 8h | 200 | ¥200.00 |
| 48 | 2.10.4 | 浏览活动 | 1d | 2019-04-26 | 2019-04-26 | 45 | 11d |  | 程序员3 | 8h | 200 | ¥200.00 |
| 49 | 2.10.5 | 查看活动详情 | 1d | 2019-04-26 | 2019-04-26 | 45 | 11d |  | 程序员1 | 8h | 200 | ¥200.00 |
| 50 | 2.10.6 | 按关键字搜索活动 | 1d | 2019-04-29 | 2019-04-29 | 45 | 10d |  | 程序员1 | 8h | 200 | ¥200.00 |
| 51 | 2.10.7 | 按类别检索活动 | 1d | 2019-04-29 | 2019-04-29 | 45 | 10d |  | 测试员1 | 8h | 160 | ¥160.00 |
| 52 | 2.10.8 | 报名参加活动 | 1d | 2019-04-29 | 2019-04-29 | 45 | 10d |  | 程序员2 | 8h | 200 | ¥200.00 |
| 53 | 2.10.9 | 编辑个人信息 | 1d | 2019-04-30 | 2019-04-30 | 45 | 9d |  | 程序员2 | 8h | 200 | ¥200.00 |
| 54 | 2.10.10 | 个人中心查看浏览记录 | 1d | 2019-05-01 | 2019-05-01 | 45 | 8d |  | 程序员2 | 8h | 200 | ¥200.00 |
| 55 | 2.10.11 | 个人中心查看报名情况 | 1d | 2019-04-26 | 2019-04-26 | 45 | 11d |  | 程序员2 | 8h | 200 | ¥200.00 |

| ID | WBS | Task | Duration | Start | Finish | Predecessors | Total slack | Free slack | Resources | Work | Cost | 总成本 |
| --- | --- | --- | --- | --- | --- | --- | --- | --- | --- | --- | --- | --- |
| 56 | 2.11 | **组织模块** | 7d | 2019-05-01 | 2019-05-09 |  | 2d |  |  | 104h | 2,600 | ¥2,600.00 |
| 57 | 2.11.1 | 登录系统 | 1d | 2019-05-01 | 2019-05-01 | 43 | 2d | 0d | 程序员3 | 8h | 200 | ¥200.00 |
| 58 | 2.11.2 | 注册账号 | 1d | 2019-05-03 | 2019-05-03 | 43 | 6d |  | 程序员3 | 8h | 200 | ¥200.00 |
| 59 | 2.11.3 | 退出系统 | 1d | 2019-05-06 | 2019-05-06 | 57 | 5d |  | 程序员3 | 8h | 200 | ¥200.00 |
| 60 | 2.11.4 | 发布活动 | 1d | 2019-05-07 | 2019-05-07 | 57 | 4d |  | 程序员3 | 8h | 200 | ¥200.00 |
| 61 | 2.11.5 | 修改活动 | 1d | 2019-05-08 | 2019-05-08 | 57 | 3d |  | 程序员3 | 8h | 200 | ¥200.00 |
| 62 | 2.11.6 | 删除活动 | 1d | 2019-05-09 | 2019-05-09 | 57 | 2d |  | 程序员3 | 8h | 200 | ¥200.00 |
| 63 | 2.11.7 | 浏览活动 | 1d | 2019-05-02 | 2019-05-02 | 57 | 7d |  | 程序员3 | 8h | 200 | ¥200.00 |
| 64 | 2.11.8 | 查看活动详情 | 1d | 2019-05-03 | 2019-05-03 | 57 | 6d |  | 程序员2 | 8h | 200 | ¥200.00 |
| 65 | 2.11.9 | 导出活动报名表 | 1d | 2019-05-06 | 2019-05-06 | 57 | 5d |  | 程序员2 | 8h | 200 | ¥200.00 |
| 66 | 2.11.10 | 根据线下签到确认参与人员 | 1d | 2019-05-02 | 2019-05-02 | 57 | 7d |  | 程序员2 | 8h | 200 | ¥200.00 |
| 67 | 2.11.11 | 组织中心查看已发布活动 | 1d | 2019-05-03 | 2019-05-03 | 57 | 6d |  | 程序员1 | 8h | 200 | ¥200.00 |
| 68 | 2.11.12 | 组织中心查看报名信息 | 1d | 2019-05-06 | 2019-05-06 | 57 | 5d |  | 程序员1 | 8h | 200 | ¥200.00 |
| 69 | 2.11.13 | 编辑组织信息 | 1d | 2019-05-02 | 2019-05-02 | 57 | 7d |  | 程序员1 | 8h | 200 | ¥200.00 |
| 70 | 2.12 | **班委模块** | 15d | 2019-04-23 | 2019-05-13 |  |  |  |  | 64h | 1,600 | ¥1,600.00 |
| 71 | 2.12.1 | 登录系统 | 1d | 2019-04-24 | 2019-04-24 | 43 | 2d | 0d | 程序员3 | 8h | 200 | ¥200.00 |
| 72 | 2.12.2 | 注册账号 | 1d | 2019-04-23 | 2019-04-23 | 43 | 14d |  | 程序员3 | 8h | 200 | ¥200.00 |
| 73 | 2.12.3 | 退出系统 | 1d | 2019-05-10 | 2019-05-10 | 71 | 1d |  | 程序员3 | 8h | 200 | ¥200.00 |
| 74 | 2.12.4 | 查询本班学生参加活动 | 1d | 2019-04-30 | 2019-04-30 | 71 | 9d |  | 程序员1 | 8h | 200 | ¥200.00 |
| 75 | 2.12.5 | 修改本班学生参加活动 | 1d | 2019-04-25 | 2019-04-25 | 71 | 12d |  | 程序员1 | 8h | 200 | ¥200.00 |
| 76 | 2.12.6 | 导入综测其他相关信息 | 1d | 2019-05-07 | 2019-05-07 | 71 | 3d | 0d | 程序员2 | 8h | 200 | ¥200.00 |
| 77 | 2.12.7 | 计算个人综测 | 1d | 2019-04-25 | 2019-04-25 | 71 | 12d |  | 程序员2 | 8h | 200 | ¥200.00 |
| 78 | 2.12.8 | 导出Excel文件 | 1d | 2019-05-08 | 2019-05-08 | 71, 76 | 3d |  | 程序员2 | 8h | 200 | ¥200.00 |
| 79 | 2.13 | **项目监控** | 6d | 2019-04-23 | 2019-04-30 |  | 8d |  |  | 32h | 1,160 | ¥1,160.00 |
| 80 | 2.13.1 | 各项指标监控 | 1d | 2019-04-23 | 2019-04-23 | 43 | 8d | 0d | 质量专家 | 8h | 280 | ¥280.00 |
| 81 | 2.13.2 | 监控评审 | 1d | 2019-04-25 | 2019-04-25 | 80 | 7d | 0d | 质量专家 | 8h | 280 | ¥280.00 |
| 82 | 2.13.3 | 变更评审 | 1d | 2019-04-29 | 2019-04-29 | 81 | 9d | 0d | 需求专家 | 8h | 320 | ¥320.00 |
| 83 | 2.13.4 | 例会 | 1d | 2019-04-30 | 2019-04-30 | 82 | 9d |  | 质量专家 | 8h | 280 | ¥280.00 |

| ID | WBS | Task | Duration | Start | Finish | Predecessors | Total slack | Free slack | Resources | Work | Cost | 总成本 |
| --- | --- | --- | --- | --- | --- | --- | --- | --- | --- | --- | --- | --- |
| 84 | 2.14 | **管理干系人** | 6d | 2019-04-23 | 2019-04-30 |  | 9d |  |  | 24h | 1,000 | ¥1,000.00 |
| 85 | 2.14.1 | 发布项目信息 | 1d | 2019-04-23 | 2019-04-23 | 43 | 9d | 0d | 项目经理 | 8h | 400 | ¥400.00 |
| 86 | 2.14.2 | 报告监控指标 | 1d | 2019-04-24 | 2019-04-24 | 85 | 9d | 0d | 质量专家 | 8h | 280 | ¥280.00 |
| 87 | 2.14.3 | 干系人沟通 | 1d | 2019-04-30 | 2019-04-30 | 86 | 9d |  | 需求专家 | 8h | 320 | ¥320.00 |
| 88 | 2.15 | **团队建设** | 5d | 2019-04-22 | 2019-04-26 |  | 8d |  |  | 72h | 2,600 | ¥2,600.00 |
| 89 | 2.15.1 | 培训 | 1d | 2019-04-22 | 2019-04-22 | 42 | 8d | 0d | 产品经理 | 8h | 400 | ¥400.00 |
| 90 | 2.15.2 | 娱乐活动 | 1d | 2019-04-23 | 2019-04-23 | 89 | 8d | 0d | 产品经理 | 8h | 400 | ¥400.00 |
| 91 | 2.15.3 | 沟通 | 1d | 2019-04-24 | 2019-04-24 | 90 | 8d | 0d | 产品经理 | 8h | 400 | ¥400.00 |
| 92 | 2.15.4 | 采集信息 | 1d | 2019-04-25 | 2019-04-25 | 91 | 8d | 0d | 测试员1; 需求专家 | 16h | 480 | ¥480.00 |
| 93 | 2.15.5 | 项目验收 | 1d | 2019-04-26 | 2019-04-26 | 92 | 8d | 0d | 测试员1; 测试员2; 需求专家; 质量专家 | 32h | 920 | ¥920.00 |
| 94 | 2.16 | **收尾** | 5d | 2019-04-29 | 2019-05-03 |  | 6d |  |  | 24h | 840 | ¥840.00 |
| 95 | 2.16.1 | 项目终验 | 1d | 2019-05-02 | 2019-05-02 | 93 | 7d |  | 质量专家 | 8h | 280 | ¥280.00 |
| 96 | 2.16.2 | 结束采集 | 1d | 2019-05-03 | 2019-05-03 | 93 | 6d |  | 质量专家 | 8h | 280 | ¥280.00 |
| 97 | 2.16.3 | 项目内部收尾 | 1d | 2019-04-29 | 2019-04-29 | 93 | 10d |  | 质量专家 | 8h | 280 | ¥280.00 |
